# ABP Planificacion

Schedule from MS Project, 2018-09-10 to 2019-05-06, costs in €, A marks actual dates.

## Calendars

- Estándar: Mon-Fri 09:00-13:00, 15:00-19:00; Sat-Sun off.

## Resources

| Resource | Rate | Cost per use |
| --- | --- | --- |
| Débora Galdeano González | 18 | 18 |
| Marines Ánton Castelló | 18 | 18 |
| María Sánchez Marqués | 18 | 18 |
| Jose Ramon Barea Cecilia | 18 | 18 |
| David Ramón Sevilla | 18 | 18 |
| Jose Vicente Anton Coy | 18 | 18 |
| Jesus Valiente | 18 | 18 |

## Schedule

| ID | WBS | Task | Duration | Start | Finish | Predecessors | Complete | Remaining | Total slack | Free slack | Constraint | Resources | Work | Cost |
| --- | --- | --- | --- | --- | --- | --- | --- | --- | --- | --- | --- | --- | --- | --- |
| 1 | 1 | **Hito 0** | 22.2d | 2018-09-10 A | 2018-10-10 |  | 78% | 4.81d | 148.8d |  |  |  |  |  |
| 2 | 1.1 | **Iteracion 1** | 16.2d | 2018-09-10 A | 2018-10-02 A |  | 100% |  |  |  |  |  |  |  |
| 3 | 1.1.1 | [PM]Rellenar documento de Concepto del proyecto | 9.6h | 2018-09-10 A | 2018-09-11 A |  | 100% |  |  |  | start no earlier than 2018-09-10 |  |  |  |
| 4 | 1.1.2 | [PM]Rellenar Version inicial del documento Especificacion | 9.6h | 2018-10-01 A | 2018-10-02 A |  | 100% |  |  |  |  |  |  |  |
| 5 | 1.2 | **Iteracion 2** | 7.2d | 2018-10-01 A | 2018-10-10 |  | 75% | 1.8d | 148.8d |  |  |  |  |  |
| 6 | 1.2.1 | [PM]Completar y Revisar documento Especificacion | 9.6h | 2018-10-01 A | 2018-10-02 |  | 75% | 2.4h | 154.8d |  |  |  |  |  |
| 7 | 1.2.2 | [PM]Crear WBS del proyecto project | 28.8h | 2018-10-01 A | 2018-10-04 A |  | 100% |  |  |  |  |  |  |  |
| 8 | 1.2.3 | [PM]Crear plan general (tareas y precedencias basicas) en project | 28.8h | 2018-10-01 | 2018-10-04 |  |  |  | 152.4d |  |  |  |  |  |
| 9 | 1.2.4 | [PM]Elaborar el Presupuesto(hoja de calculo) | 57.6h | 2018-10-01 A | 2018-10-10 A |  | 100% |  |  |  |  |  |  |  |
| 10 | 2 | **Hito 1** | 60d | 2018-10-01 | 2018-12-21 |  |  |  | 17.75d |  |  |  | 439.81h | 8,161.25 |
| 11 | 2.1 | **Iteracion 3** | 12d | 2018-10-11 | 2018-10-26 |  |  |  | 9.75d |  | start no earlier than 2018-10-11 |  | 219.44h | 4,061.16 |
| 12 | 2.1.1 | [V1]Documento de diseño de mecánicas de los NPCs | 27h | 2018-10-11 | 2018-10-16 |  |  |  | 129.62d | 0d |  | David Ramón Sevilla [25%]; Débora Galdeano González [12%]; Jose Vicente Anton Coy [25%]; Marines Ánton Castelló [25%] | 23.49h | 438.48 |
| 13 | 2.1.2 | [v1] Documento de diseño de toma de decision: espacio y metodos | 32h | 2018-10-16 | 2018-10-22 | 12 |  |  | 129.62d | 0d |  | David Ramón Sevilla [15%]; Jose Vicente Anton Coy [20%]; Marines Ánton Castelló [20%]; Débora Galdeano González [5%] | 19.2h | 356.4 |
| 14 | 2.1.3 | [V1]Documento de diseño técnico del motor de IA | 37h | 2018-10-22 | 2018-10-26 | 13 |  |  | 129.62d | 3.75d |  | David Ramón Sevilla [25%]; Débora Galdeano González [12%]; Jose Vicente Anton Coy [25%]; Marines Ánton Castelló [25%] | 32.19h | 595.08 |
| 15 | 2.1.4 | [V2]Diseño e implementación de la arquitectura basada en objetos (diagrama de clases e implementación) | 75h | 2018-10-11 | 2018-10-24 |  |  |  | 138.62d |  |  | David Ramón Sevilla [10%]; Débora Galdeano González [8%]; Jose Ramon Barea Cecilia [10%]; Jose Vicente Anton Coy [10%]; María Sánchez Marqués [30%]; Marines Ánton Castelló [20%] | 66h | 1,203.84 |
| 16 | 2.1.5 | [TDS]Grabaciones propias | 32h | 2018-10-11 | 2018-10-16 |  |  |  | 137.62d | 11.75d |  | David Ramón Sevilla [15%]; Débora Galdeano González [12%]; Jose Vicente Anton Coy [25%]; Marines Ánton Castelló [25%] | 24.64h | 457.38 |
| 17 | 2.1.6 | [TDS]Síntesis | 20h | 2018-10-11 | 2018-10-15 |  |  |  | 145.5d |  |  | David Ramón Sevilla [18%]; Jose Ramon Barea Cecilia [30%]; María Sánchez Marqués [30%]; Débora Galdeano González [18%] | 19.2h | 362.88 |
| 18 | 2.1.7 | [TDS]Grabaciones propias | 20h | 2018-10-11 | 2018-10-15 |  |  |  | 145.5d |  |  | David Ramón Sevilla [15%]; Jose Ramon Barea Cecilia [17%]; María Sánchez Marqués [25%]; Débora Galdeano González [10%] | 13.4h | 253.26 |
| 19 | 2.1.8 | [RV]Boceto de los personajes | 30h | 2018-10-11 | 2018-10-16 |  |  |  | 144.25d |  |  | Débora Galdeano González [10%] | 3h | 55.8 |
| 20 | 2.1.9 | [PD]Vídeo con animación del logo de la empresa | 60h | 2018-10-11 | 2018-10-22 |  |  |  | 140.5d |  |  | Jose Ramon Barea Cecilia [30%] | 18h | 329.4 |
| 21 | 2.1.10 | [PM]Registrar tiempos y % de realización de tareas en Project | 2h | 2018-10-24 | 2018-10-24 |  |  |  | 0d |  | must finish on 2018-10-24 | David Ramón Sevilla [2%]; Débora Galdeano González [2%]; Jose Ramon Barea Cecilia [4%]; Jose Vicente Anton Coy [2%]; María Sánchez Marqués [4%]; Marines Ánton Castelló [2%] | 0.32h | 8.64 |
| 22 | 2.2 | **Iteracion 4** | 42d | 2018-10-25 | 2018-12-21 |  |  |  | 96d |  | start no earlier than 2018-10-25 |  | 162.72h | 2,997.09 |
| 23 | 2.2.1 | [PM]Rellenar documento Gestión de riesgos | 23.04h | 2018-10-25 | 2018-10-29 |  |  |  | 135.12d |  |  | David Ramón Sevilla [2%]; Débora Galdeano González [2%]; Jose Ramon Barea Cecilia [2%]; María Sánchez Marqués [2%]; Marines Ánton Castelló [2%]; Jose Vicente Anton Coy [2%] | 2.76h | 51.93 |
| 24 | 2.2.2 | [RV]Bocetos de los elementos | 18h | 2018-10-25 | 2018-10-29 |  |  |  | 135.75d |  |  | Débora Galdeano González [8%]; Marines Ánton Castelló [8%]; María Sánchez Marqués [8%] | 4.32h | 82.08 |
| 25 | 2.2.3 | [V1]Sistema de toma de decisión con Behaviour Trees | 51h | 2018-11-01 | 2018-11-12 | 26, 16, 14 |  |  | 125.88d |  |  | David Ramón Sevilla [15%]; Débora Galdeano González [15%]; Jose Vicente Anton Coy [15%]; Marines Ánton Castelló [15%] | 30.6h | 561.6 |
| 26 | 2.2.4 | [V1]Sistema de percepción sensorial (vista, oído, olfato, canales…) | 46h | 2018-10-25 | 2018-11-01 | 12 |  |  | 125.88d | 0d |  | David Ramón Sevilla [15%]; Débora Galdeano González [15%]; Jose Vicente Anton Coy [15%]; Marines Ánton Castelló [15%] | 27.6h | 507.6 |
| 27 | 2.2.5 | [V2]Diseño e implementación de la arquitectura basada en componentes (diagrama de clases e implementación) | 100h | 2018-10-25 | 2018-11-12 |  |  |  | 125.5d |  |  | David Ramón Sevilla [10%]; Débora Galdeano González [10%]; Jose Ramon Barea Cecilia [10%]; Jose Vicente Anton Coy [10%]; María Sánchez Marqués [10%]; Marines Ánton Castelló [10%] | 60h | 1,090.8 |
| 28 | 2.2.6 | [v2]Utilización de joints en las mecánicas jugables | 17h | 2018-10-25 | 2018-10-29 |  |  |  | 135.88d |  |  | David Ramón Sevilla [10%]; Débora Galdeano González [10%]; Jose Ramon Barea Cecilia [10%]; Jose Vicente Anton Coy [10%]; María Sánchez Marqués [10%]; Marines Ánton Castelló [10%] | 10.2h | 194.4 |
| 29 | 2.2.7 | [V2]Mecánicas básicas entidades sin IA | 30h | 2018-10-25 | 2018-10-30 |  |  |  | 134.25d |  |  | David Ramón Sevilla [15%]; Débora Galdeano González [15%]; Jose Ramon Barea Cecilia [15%]; Jose Vicente Anton Coy [15%]; María Sánchez Marqués [15%]; Marines Ánton Castelló [15%] | 27h | 502.2 |
| 30 | 2.2.8 | [PM]Registrar tiempos y % de realización de tareas en Project | 2h | 2018-12-21 | 2018-12-21 |  |  |  | 96d |  | finish no earlier than 2018-12-21 | David Ramón Sevilla [2%]; Débora Galdeano González [2%]; Jose Ramon Barea Cecilia [2%]; Jose Vicente Anton Coy [2%]; María Sánchez Marqués [2%]; Marines Ánton Castelló [2%] | 0.24h | 6.48 |

| ID | WBS | Task | Duration | Start | Finish | Predecessors | Total slack | Free slack | Constraint | Resources | Work | Cost |
| --- | --- | --- | --- | --- | --- | --- | --- | --- | --- | --- | --- | --- |
| 31 | 2.3 | **Iteracion 5** | 5.76d | 2018-11-08 | 2018-11-15 |  | 122.24d |  | start no earlier than 2018-11-08 |  | 39.65h | 746.6 |
| 32 | 2.3.1 | [PM]Aplicar el modelo EVA en Project | 21.6h | 2018-11-08 | 2018-11-12 |  | 125.3d |  |  | David Ramón Sevilla [8%]; Débora Galdeano González [8%]; Jose Ramon Barea Cecilia [8%]; Jose Vicente Anton Coy [8%]; María Sánchez Marqués [8%]; Marines Ánton Castelló [8%]; Jesus Valiente | 10.37h | 195.26 |
| 33 | 2.3.2 | [PM]Detallar plan iteraciones del mes de Noviembre. Creación Subtareas y precedencias en Project | 23.04h | 2018-11-08 | 2018-11-12 |  | 122.24d | 0d |  | Jose Vicente Anton Coy [20%]; David Ramón Sevilla [15%] | 8.06h | 151.45 |
| 34 | 2.3.3 | [PM]Detallar plan iteraciones del mes de Noviembre. Asignar recursos a las tareas en Project | 23.04h | 2018-11-12 | 2018-11-15 | 33 | 122.24d |  |  | David Ramón Sevilla [20%]; Jose Vicente Anton Coy [20%] | 9.22h | 173.09 |
| 35 | 2.3.4 | [TDS]Sonidos externos | 20h | 2018-11-08 | 2018-11-12 |  | 125.5d |  |  | David Ramón Sevilla [15%]; Jose Ramon Barea Cecilia [15%]; María Sánchez Marqués [15%]; Débora Galdeano González [15%] | 12h | 226.8 |
| 36 | 2.3.5 | [v2]Formato propio para la definicion de los niveles(documentos con la especifiacion del formato) | 11h | 2018-11-08 | 2018-11-09 |  | 123.12d | 0d |  |  |  |  |
| 37 | 2.3.6 | [V2]Creación de un cargador de niveles | 28h | 2018-11-09 | 2018-11-14 | 36 | 123.12d |  |  |  |  |  |
| 38 | 2.3.7 | [v2]Control del player: movimiento y colisiones sin motor de físicas | 40h | 2018-11-08 | 2018-11-14 |  | 123d |  |  |  |  |  |
| 39 | 2.3.8 | [v2]Implementacion de camara de seguimiento | 17h | 2018-11-08 | 2018-11-12 |  | 125.88d |  |  |  |  |  |
| 40 | 2.4 | **Iteracion 6** | 10.12d | 2018-11-22 | 2018-12-06 |  | 107.88d |  | start no earlier than 2018-11-22 |  | 6h | 118.8 |
| 41 | 2.4.1 | [RV]Bocetos del entorno | 18h | 2018-11-22 | 2018-11-26 |  | 115.75d |  |  |  |  |  |
| 42 | 2.4.2 | [TDS]Cue Sheet | 10h | 2018-11-22 | 2018-11-23 |  | 116.75d |  |  | David Ramón Sevilla [15%]; Jose Ramon Barea Cecilia [15%]; María Sánchez Marqués [15%]; Débora Galdeano González [15%] | 6h | 118.8 |
| 43 | 2.4.3 | [V1]Sistema de distribución central de tiempo de proceso (Scheduling) | 41h | 2018-11-22 | 2018-11-29 |  | 107.88d | 0d |  |  |  |  |
| 44 | 2.4.4 | [v1]Gestión de recursos de IA con Level-of-Detail (LoD) | 40h | 2018-11-29 | 2018-12-06 | 43 | 107.88d |  |  |  |  |  |
| 45 | 2.4.5 | [V2]Utilización de propiedades físicas en las mecánicas jugables | 17h | 2018-11-22 | 2018-11-26 |  | 115.88d |  |  |  |  |  |
| 46 | 2.4.6 | [V2]Uso de trazado de rayos y otros tests de las físicas | 17h | 2018-11-22 | 2018-11-26 |  | 115.88d |  |  |  |  |  |
| 47 | 2.4.7 | [V2]Mecánicas de acción | 30h | 2018-11-22 | 2018-11-27 |  | 114.25d |  |  |  |  |  |
| 48 | 2.5 | **Iteracion 7** | 7.5d | 2018-12-06 | 2018-12-17 |  | 100.5d |  | start no earlier than 2018-12-06 |  | 12h | 237.6 |
| 49 | 2.5.1 | [PM]Detallar plan iteraciones del mes de Diciembre. Creación Subtareas y precedencias en Project | 23.04h | 2018-12-06 | 2018-12-10 |  | 102.24d | 0d |  |  |  |  |
| 50 | 2.5.2 | [PM]Detallar plan iteraciones del mes de Diciembre. Asignar recursos a las tareas en Project | 23.04h | 2018-12-10 | 2018-12-13 | 49 | 102.24d |  |  |  |  |  |
| 51 | 2.5.3 | [TDS]Integración del motor de audio en el juego con prueba de concepto | 10h | 2018-12-06 | 2018-12-07 |  | 106.75d |  |  | David Ramón Sevilla [15%]; Jose Ramon Barea Cecilia [15%]; María Sánchez Marqués [15%]; Débora Galdeano González [15%] | 6h | 118.8 |
| 52 | 2.5.4 | [PD]Cartel juego/proyecto | 60h | 2018-12-06 | 2018-12-17 |  | 100.5d |  |  |  |  |  |
| 53 | 2.5.5 | [TDS]Hoja de metadatos | 10h | 2018-12-06 | 2018-12-07 |  | 106.75d |  |  | David Ramón Sevilla [15%]; Jose Ramon Barea Cecilia [15%]; María Sánchez Marqués [15%]; Débora Galdeano González [15%] | 6h | 118.8 |
| 54 | 2.5.6 | [v2]Mecanicas de puzzle | 32h | 2018-12-06 | 2018-12-11 |  | 104d |  |  |  |  |  |
| 55 | 2.5.7 | [V2]Mecánicas de rol | 30h | 2018-12-06 | 2018-12-11 |  | 104.25d |  |  |  |  |  |
| 56 | 2.5.8 | [v2]Uso de sistema de depuración visual de las físicas | 10h | 2018-12-06 | 2018-12-07 |  | 106.75d |  |  |  |  |  |
| 57 | 2.5.9 | [v2]Power-ups y elementos adicionales | 28h | 2018-12-06 | 2018-12-11 |  | 104.5d |  |  |  |  |  |
| 58 | 2.6 | [PM]Comparar la planificación prevista y real en Project hito 1 | 21.6h | 2018-10-01 | 2018-10-03 |  | 147d | 0d |  |  |  |  |
| 59 | 2.7 | [PM]Confeccionar Informes de iteración e informe resumen de Hito 1 | 21.6h | 2018-10-03 | 2018-10-08 | 58 | 147d | 0d |  |  |  |  |
| 60 | 2.8 | [PM]Elaborar la presentación del Hito 1 | 14.4h | 2018-10-08 | 2018-10-10 | 59 | 147d | 0d |  |  |  |  |
| 61 | 2.9 | [PM]Exponer la presentación del Hito 1 | 14.4h | 2018-10-10 | 2018-10-11 | 60 | 147d |  |  |  |  |  |

| ID | WBS | Task | Type | Duration | Start | Finish | Total slack |
| --- | --- | --- | --- | --- | --- | --- | --- |
| 62 | 3 | **Hito 2** |  | 76d? | 2018-10-01 | 2019-01-14 | 52d |
| 63 | 3.1 | **Navidad** |  | 1d | 2018-12-11 | 2018-12-12 | 0d |
| 64 | 3.1.1 | <Tarea nueva> | manual | 1d? | 2018-12-11 | 2018-12-12 |  |
| 65 | 3.2 | **Iteracion 8** |  | 1d | 2019-01-14 | 2019-01-14 | 0d |
| 66 | 3.2.1 | <Tarea nueva> | manual | 1d? | 2019-01-14 | 2019-01-14 |  |
| 67 | 3.3 | [PM]Revisar especificación proyecto |  | 1d | 2018-10-01 | 2018-10-01 | 155d |
| 68 | 3.4 | [PM]Reestimar proyecto |  | 1d? | 2018-10-01 | 2018-10-01 | 155d |
| 69 | 3.5 | [PM]Detallar plan iteraciones del mes de Enero. Creación Subtareas y precedencias en Project |  | 1d? | 2018-10-01 | 2018-10-01 | 155d |
| 70 | 3.6 | [PM]Detallar plan iteraciones del mes de Enero. Asignar recursos a las tareas en Project |  | 1d? | 2018-10-01 | 2018-10-01 | 155d |
| 71 | 3.7 | [PM]Registrar tiempos y % de realización de tareas en Project |  | 1d? | 2018-10-01 | 2018-10-01 | 155d |
| 72 | 3.8 | [PM]Comparar la planificación prevista y real en Project hito 2 |  | 1d? | 2018-10-01 | 2018-10-01 | 155d |
| 73 | 3.9 | [PM]Confeccionar Informes de iteración e informe resumen de Hito 2 |  | 1d? | 2018-10-01 | 2018-10-01 | 155d |
| 74 | 3.10 | [V1]Sistema de depuración visual in-game de la IA |  | 1d | 2018-10-01 | 2018-10-01 | 155d |
| 75 | 3.11 | [V1]Sistema de distribución central de tiempo de proceso (Scheduling) |  | 1d? | 2018-10-01 | 2018-10-01 | 155d |
| 76 | 3.12 | [V2]Power-ups y elementos adicionales |  | 1d | 2018-10-01 | 2018-10-01 | 155d |
| 77 | 3.13 | [V2]Integración de librería para GUI |  | 1d | 2018-10-01 | 2018-10-01 | 155d |
| 78 | 3.14 | [V2]Implementación de menús |  | 1d | 2018-10-01 | 2018-10-01 | 155d |
| 79 | 3.15 | [V2]Implementación del HUD |  | 1d | 2018-10-01 | 2018-10-01 | 155d |
| 80 | 3.16 | [PD]Trailer juego/proyecto |  | 1d | 2018-10-01 | 2018-10-01 | 155d |
| 81 | 3.17 | [PD]Making of juego/proyecto |  | 1d | 2018-10-01 | 2018-10-01 | 155d |
| 82 | 3.18 | [RV]Modelado de los personajes |  | 1d | 2018-10-01 | 2018-10-01 | 155d |
| 83 | 3.19 | [RV]Texturizado de los personajes |  | 1d | 2018-10-01 | 2018-10-01 | 155d |
| 84 | 3.20 | [RV]Modelado del entorno y elementos |  | 1d | 2018-10-01 | 2018-10-01 | 155d |
| 85 | 3.21 | <Tarea nueva> |  | 1d? | 2018-10-01 | 2018-10-01 | 155d |

| ID | WBS | Task | Type | Duration | Start | Finish | Total slack |
| --- | --- | --- | --- | --- | --- | --- | --- |
| 86 | 4 | **Hito 3** |  | 114d? | 2018-10-01 | 2019-03-07 | 42d |
| 87 | 4.1 | **Iteracion 9** |  | 1d | 2019-01-24 | 2019-01-24 | 0d |
| 88 | 4.1.1 | <Tarea nueva> | manual | 1d? | 2019-01-24 | 2019-01-24 |  |
| 89 | 4.2 | **Iteracion 10** |  | 1d | 2019-02-07 | 2019-02-07 | 0d |
| 90 | 4.2.1 | <Tarea nueva> | manual | 1d? | 2019-02-07 | 2019-02-07 |  |
| 91 | 4.3 | **Iteracion 11** |  | 1d | 2019-02-22 | 2019-02-22 | 0d |
| 92 | 4.3.1 | <Tarea nueva> | manual | 1d? | 2019-02-22 | 2019-02-22 |  |
| 93 | 4.4 | **Iteracion 12** |  | 1d | 2019-03-07 | 2019-03-07 | 0d |
| 94 | 4.4.1 | <Tarea nueva> | manual | 1d? | 2019-03-07 | 2019-03-07 |  |
| 95 | 4.5 | [PM]Detallar plan iteraciones del mes de Febrero-Marzo. Creación Subtareas y precedencias en Project |  | 1d | 2018-10-01 | 2018-10-01 | 155d |
| 96 | 4.6 | [PM]Detallar plan iteraciones del mes de Febrero-Marzo Asignar recursos a las tareas en Project |  | 1d? | 2018-10-01 | 2018-10-01 | 155d |
| 97 | 4.7 | [PM]Registrar tiempos y % de realización de tareas en Project |  | 1d? | 2018-10-01 | 2018-10-01 | 155d |
| 98 | 4.8 | [PM]Comparar la planificación prevista y real en Project hito 3 |  | 1d? | 2018-10-01 | 2018-10-01 | 155d |
| 99 | 4.9 | [PM]Confeccionar Informes de iteración e informe resumen de Hito 3 |  | 1d? | 2018-10-01 | 2018-10-01 | 155d |
| 100 | 4.10 | [PM]Elaborar la presentación del Hito 3 |  | 1d? | 2018-10-01 | 2018-10-01 | 155d |
| 101 | 4.11 | [PM]Exponer la presentación del Hito 3 |  | 1d? | 2018-10-01 | 2018-10-01 | 155d |
| 102 | 4.12 | [TAG]Estructura básica del nodo (array de hijos, puntero a padre, puntero a entidad, funcionalidad básica -constructor, destructor, gets, sets, manejo de hijos….) |  | 1d? | 2018-10-01 | 2018-10-01 | 155d |
| 103 | 4.13 | [TAG]Recorrido-dibujado del árbol |  | 1d? | 2018-10-01 | 2018-10-01 | 155d |
| 104 | 4.14 | [TAG]Estructura básica de la entidad (Constructor, destructor, funciones… todas virtuales, vacías) |  | 1d | 2018-10-01 | 2018-10-01 | 155d |
| 105 | 4.15 | [TAG]Matrices (model, view, projection) y pila estáticas y su manejo |  | 1d? | 2018-10-01 | 2018-10-01 | 155d |
| 106 | 4.16 | [TAG]Estructura básica de la transformación (Constructor, destructor, matriz transformación…) |  | 1d? | 2018-10-01 | 2018-10-01 | 155d |
| 107 | 4.17 | [TAG]Operaciones de transformación (trasladar, rotar, escalar, identidad, trasponer, invertir, todas con GLM o GLMatrix) |  | 1d? | 2018-10-01 | 2018-10-01 | 155d |
| 108 | 4.18 | [TAG]Dibujado (begindraw, enddraw, manejo pila y matriz model) |  | 1d? | 2018-10-01 | 2018-10-01 | 155d |
| 109 | 4.19 | [TAG]Estructura básica de la cámara (Constructor, destructor, matriz proyección) |  | 1d? | 2018-10-01 | 2018-10-01 | 155d |
| 110 | 4.20 | [TAG]Rellenar matriz perspectiva (con GLM o GLMatrix) |  | 1d | 2018-10-01 | 2018-10-01 | 155d |
| 111 | 4.21 | [TAG]Estructura básica de la luz (Constructor, destructor) |  | 1d? | 2018-10-01 | 2018-10-01 | 155d |
| 112 | 4.22 | [TAG]Datos y funciones luz puntual |  | 1d? | 2018-10-01 | 2018-10-01 | 155d |
| 113 | 4.23 | [TAG]Estructura básica de la malla (Constructor, destructor) |  | 1d? | 2018-10-01 | 2018-10-01 | 155d |
| 114 | 4.24 | [TAG]Datos de mallas, texturas, materiales… (llamadas al gestor de recursos) |  | 1d? | 2018-10-01 | 2018-10-01 | 155d |
| 115 | 4.25 | [TAG]Dibujado de mallas (begindraw, enddraw, matriz model…) |  | 1d? | 2018-10-01 | 2018-10-01 | 155d |
| 116 | 4.26 | [TAG]Estructura básica del gestor de recursos (constructor, destructor, vectores de recursos) |  | 1d? | 2018-10-01 | 2018-10-01 | 155d |
| 117 | 4.27 | [TAG]Obtener recurso (gestión adecuada de memoria) |  | 1d? | 2018-10-01 | 2018-10-01 | 155d |
| 118 | 4.28 | [TAG]Estructura básica del recurso (constructor, destructor. Es virtual, vacío) |  | 1d? | 2018-10-01 | 2018-10-01 | 155d |
| 119 | 4.29 | [TAG]Estructura básica de la malla (constructor, destructor) |  | 1d? | 2018-10-01 | 2018-10-01 | 155d |
| 120 | 4.30 | [TAG]Lectura de disco (con assimp) |  | 1d? | 2018-10-01 | 2018-10-01 | 155d |
| 121 | 4.31 | [TAG]Creación de buffers de vértices, normales, índices… y relleno |  | 1d? | 2018-10-01 | 2018-10-01 | 155d |
| 122 | 4.32 | [TAG]Dibujado de las mallas (draw, con paso de los buffers a OpenGL o WebGL) |  | 1d? | 2018-10-01 | 2018-10-01 | 155d |
| 123 | 4.33 | [TAG]Estructura básica del material (constructor, destructor) |  | 1d? | 2018-10-01 | 2018-10-01 | 155d |
| 124 | 4.34 | [TAG]Leer material de disco (con librería o con parser propio) y rellenar valores |  | 1d? | 2018-10-01 | 2018-10-01 | 155d |
| 125 | 4.35 | [TAG]Dibujado de los materiales (preparar los materiales y cargarlos en OpenGL o WebGL) |  | 1d? | 2018-10-01 | 2018-10-01 | 155d |
| 126 | 4.36 | [TAG]Estructura básica del shader (constructor, destructor) |  | 1d? | 2018-10-01 | 2018-10-01 | 155d |
| 127 | 4.37 | [TAG]Lectura de shaders de disco (con parser propio) y guardarlo |  | 1d? | 2018-10-01 | 2018-10-01 | 155d |
| 128 | 4.38 | [TAG]Estructura básica de la interfaz (constructor, destructor, inicialización motor y openGL) |  | 1d? | 2018-10-01 | 2018-10-01 | 155d |
| 129 | 4.39 | [TAG]Funciones para crear cámaras y gestionarlas (manejo de las cámaras, registro, cálculo de la matriz view) |  | 1d? | 2018-10-01 | 2018-10-01 | 155d |
| 130 | 4.40 | [TAG]Funciones para crear luces y gestionarlas (manejo de las luces registro, cálculo de la matriz light) |  | 1d? | 2018-10-01 | 2018-10-01 | 155d |
| 131 | 4.41 | [TAG]Funciones para crear transformaciones (creación de varios nodos con las transformaciones, manejo de las transformaciones) |  | 1d? | 2018-10-01 | 2018-10-01 | 155d |
| 132 | 4.42 | [TAG]Funciones para crear mallas y animaciones |  | 1d? | 2018-10-01 | 2018-10-01 | 155d |
| 133 | 4.43 | [TAG]Funciones para crear shaders y gestionarlos |  | 1d? | 2018-10-01 | 2018-10-01 | 155d |
| 134 | 4.44 | [TAG]Shader básico (Sombreado de Phong, reflexión de Phong) con materiales |  | 1d? | 2018-10-01 | 2018-10-01 | 155d |
| 135 | 4.45 | [TAG]Integración con la aplicación |  | 1d? | 2018-10-01 | 2018-10-01 | 155d |
| 136 | 4.46 | [TAG]Realización de una fachada entre el motor y la aplicación o videojuego |  | 1d? | 2018-10-01 | 2018-10-01 | 155d |
| 137 | 4.47 | [TAG]Librería matemática (GLM o GLMatrix) |  | 1d? | 2018-10-01 | 2018-10-01 | 155d |
| 138 | 4.48 | [TAG][Solo CED] Librería de lectura de mallas (assimp…) |  | 1d? | 2018-10-01 | 2018-10-01 | 155d |
| 139 | 4.49 | [TAG][Solo CED] Librería de ventanas, entrada/salida... (GLFW…) |  | 1d? | 2018-10-01 | 2018-10-01 | 155d |
| 140 | 4.50 | [V1]Flocking: comportamiento grupal emergente |  | 1d | 2018-10-01 | 2018-10-01 | 155d |
| 141 | 4.51 | [V1]Editor in-game de parámetros y comportamientos de la IA |  | 1d | 2018-10-01 | 2018-10-01 | 155d |
| 142 | 4.52 | [V1]Sistema de logros y puntuaciones web |  | 1d | 2018-10-01 | 2018-10-01 | 155d |
| 143 | 4.53 | [V2]Implementación de cesped y vegetación |  | 1d | 2018-10-01 | 2018-10-01 | 155d |
| 144 | 4.54 | [V2]Implementación de nubes |  | 1d | 2018-10-01 | 2018-10-01 | 155d |
| 145 | 4.55 | [V2]Implementación de sistemas de partículas |  | 1d | 2018-10-01 | 2018-10-01 | 155d |
| 146 | 4.56 | [TDS]Resto de la biblioteca (máx. 1/3), cuesheet y metadatos finales |  | 1d | 2018-10-01 | 2018-10-01 | 155d |
| 147 | 4.57 | <Tarea nueva> |  | 1d? | 2018-10-01 | 2018-10-01 | 155d |

| ID | WBS | Task | Type | Duration | Start | Finish | Total slack |
| --- | --- | --- | --- | --- | --- | --- | --- |
| 148 | 5 | **hito 4** |  | 156d? | 2018-10-01 | 2019-05-06 | 0d |
| 149 | 5.1 | **Iteracion 13** |  | 1d | 2019-03-28 | 2019-03-28 | 0d |
| 150 | 5.1.1 | <Tarea nueva> | manual | 1d? | 2019-03-28 | 2019-03-28 |  |
| 151 | 5.2 | **Semana santa** |  | 1d | 2019-04-18 | 2019-04-18 | 0d |
| 152 | 5.2.1 | <Tarea nueva> | manual | 1d? | 2019-04-18 | 2019-04-18 |  |
| 153 | 5.3 | **Iteracion 14** |  | 1d | 2019-05-06 | 2019-05-06 | 0d |
| 154 | 5.3.1 | <Tarea nueva> | manual | 1d? | 2019-05-06 | 2019-05-06 |  |
| 155 | 5.4 | [PM]Detallar plan iteraciones del mes de Abril-Mayo. Creación Subtareas y precedencias en Project |  | 1d | 2018-10-01 | 2018-10-01 | 155d |
| 156 | 5.5 | [PM]Detallar plan iteraciones del mes de Abril-Mayo. Asignar recursos a las tareas en Project |  | 1d? | 2018-10-01 | 2018-10-01 | 155d |
| 157 | 5.6 | [PM]Registrar tiempos y % de realización de tareas en Project |  | 1d? | 2018-10-01 | 2018-10-01 | 155d |
| 158 | 5.7 | [PM]Comparar la planificación prevista y real en Project hito 4 |  | 1d? | 2018-10-01 | 2018-10-01 | 155d |
| 159 | 5.8 | [PM]Confeccionar Informes de iteración e informe resumen de Hito 4 |  | 1d? | 2018-10-01 | 2018-10-01 | 155d |
| 160 | 5.9 | [PM]Elaborar la presentación del Hito 4 |  | 1d? | 2018-10-01 | 2018-10-01 | 155d |
| 161 | 5.10 | [PM]Exponer la presentación del Hito 4 |  | 1d? | 2018-10-01 | 2018-10-01 | 155d |
| 162 | 5.11 | [TAG]Estructura básica de la animación (Constructor, destructor) |  | 1d | 2018-10-01 | 2018-10-01 | 155d |
| 163 | 5.12 | [TAG]Datos de animaciones, mallas, texturas, materiales (multiples, con llamadas al gestor de recursos) |  | 1d? | 2018-10-01 | 2018-10-01 | 155d |
| 164 | 5.13 | [TAG]Dibujado de texturas (preparar las texturas y cargarlas en OpenGL o WebGL) |  | 1d? | 2018-10-01 | 2018-10-01 | 155d |
| 165 | 5.14 | [TAG]Shader básico (Sombreado de Phong, reflexión de Phong) con materiales y texturas |  | 1d? | 2018-10-01 | 2018-10-01 | 155d |
| 166 | 5.15 | [TAG]Shader Cartoon |  | 1d? | 2018-10-01 | 2018-10-01 | 155d |
| 167 | 5.16 | [TAG]Bounding boxes (incluye retocar nodos, entidades y recursos malla) |  | 1d? | 2018-10-01 | 2018-10-01 | 155d |
| 168 | 5.17 | [TAG]Backface culling |  | 1d? | 2018-10-01 | 2018-10-01 | 155d |
| 169 | 5.18 | [TAG]Frustum culling |  | 1d? | 2018-10-01 | 2018-10-01 | 155d |
| 170 | 5.19 | [TAG]Sombras proyectadas |  | 1d? | 2018-10-01 | 2018-10-01 | 155d |
| 171 | 5.20 | [TAG]Sistema de partículas (sólo la incorporación en el motor) |  | 1d? | 2018-10-01 | 2018-10-01 | 155d |
| 172 | 5.21 | [PD]Créditos |  | 1d | 2018-10-01 | 2018-10-01 | 155d |
| 173 | 5.22 | [PD]Vídeo final juego / explicación parte del proyecto |  | 1d | 2018-10-01 | 2018-10-01 | 155d |
| 174 | 5.23 | [TDS]Integración de sonido y música en el juego |  | 1d | 2018-10-01 | 2018-10-01 | 155d |
| 175 | 5.24 | [TDS]Post producción (mezcla y masterización in-game) |  | 1d | 2018-10-01 | 2018-10-01 | 155d |
| 176 | 5.25 | [TDS]Sonido generado proceduralmente in-game |  | 1d | 2018-10-01 | 2018-10-01 | 155d |
| 177 | 5.26 | [RV]Rigging de los personajes |  | 1d | 2018-10-01 | 2018-10-01 | 155d |
| 178 | 5.27 | [RV]Captura de movimiento |  | 1d | 2018-10-01 | 2018-10-01 | 155d |
| 179 | 5.28 | [RV]Animación de los personajes |  | 1d | 2018-10-01 | 2018-10-01 | 155d |
| 180 | 5.29 | [RV]Texturizado del entorno y elementos |  | 1d | 2018-10-01 | 2018-10-01 | 155d |
